# Spare Parts · Huancayo

Schedule from MS Project XML, 2024-12-02 to 2025-03-01.
2M MICON S.A.C.

## Calendars

- Obra lunes a sábado: Mon-Sat 08:00-12:00, 13:00-17:00; Sun off. Exceptions (off unless hours are given): 2024-12-09, 2024-12-25, 2025-01-01.

## Schedule

| ID | WBS | Task | Type | Duration | Start | Finish | Predecessors |
| --- | --- | --- | --- | --- | --- | --- | --- |
| 1 | 1 | Inicio de obra (entrega del local) | milestone | 0d | 2024-12-02 | 2024-12-02 |  |
| 2 | 2 | **OBRAS PRELIMINARES** |  | 8d | 2024-12-02 | 2024-12-11 |  |
| 3 | 2.1 | Movilización, protección de fachada e instalaciones provisionales |  | 3d | 2024-12-02 | 2024-12-04 | 1 |
| 4 | 2.2 | Levantamiento, trazo y replanteo |  | 2d | 2024-12-05 | 2024-12-06 | 3 |
| 5 | 2.3 | Desmontaje de instalaciones y elementos existentes |  | 3d | 2024-12-07 | 2024-12-11 | 4 |
| 6 | 3 | **REMODELACIÓN DE MUROS** |  | 25d | 2024-12-12 | 2025-01-11 |  |
| 7 | 3.1 | Demolición de tabiques y picado para canalizaciones |  | 5d | 2024-12-12 | 2024-12-17 | 5 |
| 8 | 3.2 | Muros de ladrillo de SS.HH. |  | 4d | 2024-12-18 | 2024-12-21 | 7 |
| 9 | 3.3 | Tarrajeo de muros y columnas |  | 18d | 2024-12-20 | 2025-01-11 | 8SS+2d |
| 10 | 3.4 | Nivelación del piso existente |  | 4d | 2025-01-03 | 2025-01-07 | 9SS+10d |
| 11 | 4 | **MEZANINE Y ESCALERA METÁLICA** |  | 13d | 2024-12-23 | 2025-01-08 |  |
| 12 | 4.1 | Columnas metálicas del mezanine (anclaje) |  | 2d | 2024-12-23 | 2024-12-24 | 8 |
| 13 | 4.2 | Vigas y viguetas metálicas |  | 4d | 2024-12-26 | 2024-12-30 | 12 |
| 14 | 4.3 | Losa colaborante del mezanine |  | 3d | 2024-12-31 | 2025-01-03 | 13 |
| 15 | 4.4 | Escalera metálica de 12 pasos |  | 4d | 2024-12-31 | 2025-01-04 | 13 |
| 16 | 4.5 | Baranda de vidrio y franja turquesa |  | 3d | 2025-01-06 | 2025-01-08 | 14, 15 |
| 17 | 5 | **INSTALACIONES** |  | 29d | 2024-12-14 | 2025-01-18 |  |
| 18 | 5.1 | Instalaciones sanitarias de SS.HH. |  | 5d | 2024-12-19 | 2024-12-24 | 8SS+1d |
| 19 | 5.2 | IIEE: tuberías, cajas y canalizaciones |  | 8d | 2024-12-14 | 2024-12-23 | 7SS+2d |
| 20 | 5.3 | IIEE: cableado, tablero y pozo a tierra |  | 6d | 2025-01-13 | 2025-01-18 | 19, 9 |
| 21 | 6 | **ACABADOS** |  | 25d | 2025-01-13 | 2025-02-10 |  |
| 22 | 6.1 | Pintura negra en techo y muros altos |  | 8d | 2025-01-13 | 2025-01-21 | 9, 19 |
| 23 | 6.2 | Porcelanato en pisos y paredes de SS.HH. |  | 5d | 2025-01-13 | 2025-01-17 | 18, 9 |
| 24 | 6.3 | Piso SPC tipo madera |  | 6d | 2025-01-22 | 2025-01-28 | 10, 22 |
| 25 | 6.4 | Pintura látex en muros y negro en columnas |  | 8d | 2025-01-22 | 2025-01-30 | 22 |
| 26 | 6.5 | Panel perforado, muro verde y listones |  | 9d | 2025-01-31 | 2025-02-10 | 25 |
| 27 | 6.6 | Puertas y aparatos sanitarios |  | 3d | 2025-01-18 | 2025-01-21 | 23 |

| ID | WBS | Task | Type | Duration | Start | Finish | Predecessors |
| --- | --- | --- | --- | --- | --- | --- | --- |
| 28 | 7 | **FACHADA Y LETRERO** |  | 24d | 2024-12-26 | 2025-01-23 |  |
| 29 | 7.1 | Estructura metálica de fachada |  | 5d | 2024-12-26 | 2024-12-31 | 9SS+4d |
| 30 | 7.2 | Revestimiento ACM negro y turquesa |  | 6d | 2025-01-02 | 2025-01-08 | 29 |
| 31 | 7.3 | Mampara y puerta de vidrio templado |  | 5d | 2025-01-09 | 2025-01-14 | 30 |
| 32 | 7.4 | Letrero luminoso (logo y letras) |  | 4d | 2025-01-20 | 2025-01-23 | 30, 20 |
| 33 | 8 | **MOBILIARIO E ILUMINACIÓN** |  | 63d | 2024-12-07 | 2025-02-21 |  |
| 34 | 8.1 | Fabricación del mobiliario en taller y traslado |  | 45d | 2024-12-07 | 2025-01-31 | 4 |
| 35 | 8.2 | Instalación del mobiliario de exhibición y caja |  | 10d | 2025-02-11 | 2025-02-21 | 34, 24, 26 |
| 36 | 8.3 | Luminarias suspendidas y artefactos |  | 5d | 2025-01-31 | 2025-02-05 | 25, 20 |
| 37 | 8.4 | Paneles gráficos suspendidos y señalética |  | 3d | 2025-02-06 | 2025-02-08 | 36 |
| 38 | 9 | **CIERRE** |  | 6d | 2025-02-22 | 2025-02-28 |  |
| 39 | 9.1 | Pruebas, limpieza final y levantamiento de observaciones |  | 6d | 2025-02-22 | 2025-02-28 | 35, 37, 31, 32, 27, 16 |
| 40 | 9.2 | Entrega de la tienda | milestone | 0d | 2025-03-01 | 2025-03-01 | 39 |
